# Projeto E-commerce

How a schedule from MS Project changed from version to version. A marks actual dates.

## Version 1 (saved 2021-11-20)

Note of the change: Release 00

| ID | WBS | Task | Duration | Start | Finish | Predecessors | Total float |
| --- | --- | --- | --- | --- | --- | --- | --- |
| 1 | 1 | **Projeto E-commerce** | 52.3d? | 2021-09-28 08:00 | 2021-12-09 10:24 |  | 0d |
| 2 | 1.1 | **Prospecção** | 1.26d | 2021-09-28 08:00 | 2021-09-29 10:04 |  | 41.37d |
| 3 | 1.1.1 | **PETEC** | 0.7d | 2021-09-28 08:00 | 2021-09-28 14:36 |  | 41.37d |
| 4 |  | Estudar Dominio de Aplicação | 0.13d | 2021-09-28 08:00 | 2021-09-28 09:02 |  | 41.37d |
| 5 |  | Reunir-se com Fornecedor de Requisitos | 0.13d | 2021-09-28 09:02 | 2021-09-28 10:04 | 4 | 41.37d |
| 6 |  | Redigir PETEC | 0.38d | 2021-09-28 10:04 | 2021-09-28 14:07 | 5 | 41.37d |
| 7 |  | Revisar Proposta Técnica | 0.06d | 2021-09-28 14:07 | 2021-09-28 14:36 | 6 | 41.37d |
| 8 |  | Aprovar PTEC | 0d | 2021-09-28 14:36 | 2021-09-28 14:36 | 7 | 41.37d |
| 9 | 1.1.2 | **Est. Prel. Tam.** | 0.12d | 2021-09-28 14:36 | 2021-09-28 15:33 |  | 41.37d |
| 10 |  | Estimar Tamanho do Projeto | 0.06d | 2021-09-28 14:36 | 2021-09-28 15:04 | 8 | 41.37d |
| 11 |  | Revisar Estimativa de Tamanho do Projeto | 0.06d | 2021-09-28 15:04 | 2021-09-28 15:33 | 10 | 41.37d |
| 12 | 1.1.3 | **Est. Prel. Cronograma e Orçamento** | 0.44d | 2021-09-28 15:33 | 2021-09-29 10:04 |  | 41.37d |
| 13 |  | Elaborar Cronograma e Orçamento Preliminares | 0.25d | 2021-09-28 15:33 | 2021-09-29 08:33 | 11 | 41.37d |
| 14 |  | Revisar Cronograma e Orçamento Preliminares | 0.19d | 2021-09-29 08:33 | 2021-09-29 10:04 | 13 | 41.37d |
| 15 | 1.2 | **Análise** | 3.67d | 2021-09-29 10:04 | 2021-10-04 16:26 |  | 0d |
| 16 | 1.2.1 | **Documento de Requisitos** | 2.92d | 2021-09-29 10:04 | 2021-10-04 09:26 |  | 0d |
| 17 |  | Reunir-se com Cliente | 0.25d | 2021-09-29 10:04 | 2021-09-29 13:04 | 14 |  |
| 18 |  | Elaborar DRE | 1.87d | 2021-09-29 13:04 | 2021-10-01 11:02 | 17 | 41.37d |
| 19 |  | Revisar DRE | 0.8d | 2021-10-01 11:02 | 2021-10-04 09:26 | 18 |  |
| 20 |  | Submeter DRE para Aprovação do Cliente | 0d | 2021-10-04 09:26 | 2021-10-04 09:26 | 19 |  |
| 21 | 1.2.2 | **MRB** | 0.75d | 2021-10-04 09:26 | 2021-10-04 16:26 |  | 0d |
| 22 |  | Elaborar MRB | 0.56d | 2021-10-04 09:26 | 2021-10-04 14:55 | 20 |  |
| 23 |  | Revisar MRB | 0.19d | 2021-10-04 14:55 | 2021-10-04 16:26 | 22 |  |
| 24 | 1.3 | **Projeto** | 3.25d | 2021-10-04 16:26 | 2021-10-08 09:26 |  | 0d |
| 25 | 1.3.1 | **Diagrama de Classes** | 2.25d | 2021-10-04 16:26 | 2021-10-07 09:26 |  | 0d |
| 26 |  | Elaborar Diagrama de Classe | 0.75d | 2021-10-04 16:26 | 2021-10-05 14:26 | 23 |  |
| 27 |  | Revisar Diagrama de Classe | 1d | 2021-10-05 14:26 | 2021-10-06 14:26 | 26 |  |
| 28 |  | Atualizar MRB | 0.5d | 2021-10-06 14:26 | 2021-10-07 09:26 | 27 |  |
| 29 | 1.3.2 | **Modelo Entidade Relacionamento** | 1d | 2021-10-07 09:26 | 2021-10-08 09:26 |  | 0d |
| 30 |  | Elaborar Mer | 0.5d | 2021-10-07 09:26 | 2021-10-07 14:26 | 28 |  |
| 31 |  | Revisar Mer | 0.5d | 2021-10-07 14:26 | 2021-10-08 09:26 | 30 |  |
| 32 | 1.4 | **Planejamento** | 10.93d? | 2021-09-28 08:00 | 2021-10-12 16:26 |  | 41.37d |
| 33 |  | Elaborar Estimativa de Tamanho Definitiva | 1.75d | 2021-10-08 09:26 | 2021-10-11 16:26 | 31 | 41.37d |
| 34 |  | Elaborar Cronograma Definitivo | 1d | 2021-10-11 16:26 | 2021-10-12 16:26 | 33 | 41.37d |
| 35 |  | Elaborar Orçamento Definitivo | 1d? | 2021-09-28 08:00 | 2021-09-28 17:00 |  | 51.3d |
| 36 | 1.5 | **Desenvolvimento** | 52.3d | 2021-09-28 08:00 | 2021-12-09 10:24 |  | 0d |
| 37 | 1.5.1 | **Implementar RFC01 - Manter Administrador** | 0.25d | 2021-09-28 08:00 | 2021-09-28 10:00 |  | 52.05d |
| 38 |  | Implementar RF01 - Incluir administrador | 0.25d | 2021-09-28 08:00 | 2021-09-28 10:00 |  | 52.05d |
| 39 |  | Implementar RF02 - Editar administrador | 0.25d | 2021-09-28 08:00 | 2021-09-28 10:00 |  | 52.05d |
| 40 |  | Implementar RF03 - Consultar administrador | 0.25d | 2021-09-28 08:00 | 2021-09-28 10:00 |  | 52.05d |
| 41 |  | Implementar RF04 - Remover administrador | 0.25d | 2021-09-28 08:00 | 2021-09-28 10:00 |  | 52.05d |
| 42 | 1.5.2 | **Implementar RFC02 - Manter Usuário** | 0.25d | 2021-09-28 08:00 | 2021-09-28 10:00 |  | 52.05d |
| 43 |  | Implementar RF05 - Incluir usuário | 0.25d | 2021-09-28 08:00 | 2021-09-28 10:00 |  | 52.05d |
| 44 |  | Implementar RF06 - Editar usuário | 0.25d | 2021-09-28 08:00 | 2021-09-28 10:00 |  | 52.05d |
| 45 |  | Implementar RF07 - Consultar usuário | 0.25d | 2021-09-28 08:00 | 2021-09-28 10:00 |  | 52.05d |
| 46 |  | Implementar RF08 - Remover usuário | 0.25d | 2021-09-28 08:00 | 2021-09-28 10:00 |  | 52.05d |
| 47 | 1.5.3 | **Implementar RFC03 - Manter Produtos** | 0.25d | 2021-09-28 08:00 | 2021-09-28 10:00 |  | 52.05d |
| 48 |  | Implementar RF09 - Incluir produto | 0.25d | 2021-09-28 08:00 | 2021-09-28 10:00 |  | 52.05d |
| 49 |  | Implementar RF10 - Editar produto | 0.25d | 2021-09-28 08:00 | 2021-09-28 10:00 |  | 52.05d |
| 50 |  | Implementar RF11 - Procurar produto | 0.25d | 2021-09-28 08:00 | 2021-09-28 10:00 |  | 52.05d |
| 51 |  | Implementar RF12 - Remover produto | 0.25d | 2021-09-28 08:00 | 2021-09-28 10:00 |  | 52.05d |
| 52 | 1.5.4 | **Implementar RFC04 - Manter Transportadora** | 0.25d | 2021-09-28 08:00 | 2021-09-28 10:00 |  | 52.05d |
| 53 |  | Implementar RF13 - Incluir transportadora | 0.25d | 2021-09-28 08:00 | 2021-09-28 10:00 |  | 52.05d |
| 54 |  | Implementar RF14 - Editar transportadora | 0.25d | 2021-09-28 08:00 | 2021-09-28 10:00 |  | 52.05d |
| 55 |  | Implementar RF15 - Consultar transportadora | 0.25d | 2021-09-28 08:00 | 2021-09-28 10:00 |  | 52.05d |
| 56 |  | Implementar RF16 - Remover transportadora | 0.25d | 2021-09-28 08:00 | 2021-09-28 10:00 |  | 52.05d |
| 57 | 1.5.5 | **Implementar RFC05 - Realizar Compras** | 0.25d | 2021-09-28 08:00 | 2021-09-28 10:00 |  | 52.05d |
| 58 |  | Implementar RF17 - Fazer compra | 0.25d | 2021-09-28 08:00 | 2021-09-28 10:00 |  | 52.05d |
| 59 |  | Implementar RF18 - Editar compra | 0.25d | 2021-09-28 08:00 | 2021-09-28 10:00 |  | 52.05d |
| 60 |  | Implementar RF19 - Consultar compra | 0.25d | 2021-09-28 08:00 | 2021-09-28 10:00 |  | 52.05d |
| 61 |  | Implementar RF20 - Remover compra | 0.25d | 2021-09-28 08:00 | 2021-09-28 10:00 |  | 52.05d |
| 62 |  | Implementar RFC06 - Manter Avaliações | 0.3d | 2021-09-28 08:00 | 2021-09-28 10:24 |  | 52d |
| 63 | 1.5.7 | **Implementar RFC07 - Emitir Relatórios** | 1.3d | 2021-12-08 08:00 | 2021-12-09 10:24 |  | 0d |
| 64 |  | Implementar RF21 - Emitir relatório de categorias mais vendidas | 0.3d | 2021-12-08 08:00 | 2021-12-08 10:24 |  |  |
| 65 |  | Implementar RF22 - Emitir relatório de produtos mais bem avaliados | 0.3d | 2021-12-09 08:00 | 2021-12-09 10:24 |  |  |
| 66 |  | Implementar RF23 - Emitir relatório de categorias mais populares | 0.3d | 2021-12-09 08:00 | 2021-12-09 10:24 |  |  |
| 67 |  | Implementar RNF01 - Criptografar a senha armazenada no banco de dados | 0.3d | 2021-09-28 08:00 | 2021-09-28 10:24 |  | 52d |
| 68 |  | Implementar RNF02 - Limitar o número de tentativas de login malsucedidas em 5 | 0.3d | 2021-09-28 08:00 | 2021-09-28 10:24 |  | 52d |
| 69 |  | Implementar RNF03 - Toda operação deve ser retornada em até 10 segundos | 0.3d | 2021-09-28 08:00 | 2021-09-28 10:24 |  | 52d |
| 70 | 1.6 | **Monitoramento e Controle** | 0.75d | 2021-09-28 08:00 | 2021-09-28 15:00 |  | 51.55d |

| ID | WBS | Task | Duration | Start | Finish | Total float |
| --- | --- | --- | --- | --- | --- | --- |
| 71 |  | Acompanhar Projeto | 0.75d | 2021-09-28 08:00 | 2021-09-28 15:00 | 51.55d |
| 72 | 1.7 | **Gerrencia de Configuração** | 0d | 2021-09-28 08:00 | 2021-09-28 08:00 | 52.3d |
| 73 |  | Elaborar Branch | 0d | 2021-09-28 08:00 | 2021-09-28 08:00 | 52.3d |
| 74 |  | Elaborar Merge da Branch X para a Trunk | 0d | 2021-09-28 08:00 | 2021-09-28 08:00 | 52.3d |
| 75 | 1.8 | **Fechamento** | 1d? | 2021-09-28 08:00 | 2021-09-28 17:00 | 51.3d |
| 76 |  | Elaborar Relatório de Lições Aprendidas | 1d? | 2021-09-28 08:00 | 2021-09-28 17:00 | 51.3d |
| 77 |  | Atualizar Base de Dados Histórica | 1d? | 2021-09-28 08:00 | 2021-09-28 17:00 | 51.3d |
| 78 |  | Controle de Mudança | 2.13d | 2021-09-28 08:00 | 2021-09-30 09:02 | 50.17d |

## Version 2 (saved 2021-12-01)

Note of the change: Cronograma Atualizado

Last finish 2021-12-09 → 2021-12-01 (-8d). Complete tasks 0 → 33.

Added:

| ID | Task | Duration | Start | Finish | Predecessors | Resources |
| --- | --- | --- | --- | --- | --- | --- |
| 37 | **Release 01** | 1d | 2021-11-24 09:00 A | 2021-11-24 18:00 A |  |  |
| 38 | **Implementação** | 0.56d | 2021-11-24 09:00 A | 2021-11-24 14:30 A |  |  |
| 49 | **Teste** | 1d | 2021-11-24 09:00 A | 2021-11-24 18:00 A |  |  |
| 50 | Testar RFC01 | 1d | 2021-11-24 09:00 A | 2021-11-24 18:00 A | 39 | Jubeto |
| 51 | Testar RFC02 | 1d | 2021-11-24 09:00 A | 2021-11-24 18:00 A | 44 | Jubeto |
| 52 | **Release 02** | 5.06d | 2021-11-24 09:00 | 2021-12-01 09:30 |  |  |
| 53 | **Implementação** | 2.25d | 2021-11-24 09:00 | 2021-11-26 11:00 |  |  |
| 77 | **Teste** | 5.06d | 2021-11-24 09:00 | 2021-12-01 09:30 |  |  |
| 78 | Testar RFC03 | 1d | 2021-11-24 09:00 | 2021-11-24 18:00 | 54 | João |
| 79 | Testar RFC04 | 1d | 2021-11-24 09:00 | 2021-11-24 18:00 | 59 | José |
| 80 | Testar RFC05 | 1d | 2021-11-24 15:00 | 2021-11-26 10:30 | 64 | Jubeto |
| 81 | Testar RFC06 | 1d | 2021-11-25 09:00 | 2021-11-25 18:00 | 69 | João |
| 82 | Testar RFC07 | 1d | 2021-11-24 09:00 | 2021-11-24 18:00 | 70 | José |
| 83 | Testar RNF01 | 1d | 2021-11-24 15:00 | 2021-11-26 16:30 | 74 | Jubeto |
| 84 | Testar RNF02 | 1d | 2021-11-26 11:00 | 2021-11-29 11:00 | 75 | João |
| 85 | Testar RNF03 | 1d | 2021-11-25 14:30 | 2021-12-01 09:30 | 76 | José |

Changed:

| ID | Task | Start | Finish | Duration | Complete | Total float | Other |
| --- | --- | --- | --- | --- | --- | --- | --- |
| 1 | **Projeto E-commerce** | 2021-09-28 08:00 → 2021-09-28 09:00 A | 2021-12-09 10:24 → 2021-12-01 09:30 (-8d) | 52.3d? → 46.06d | 0% → 56% |  | baseline start 2021-09-28 08:00 → 2021-09-28 09:00; baseline finish none → 2021-12-01 09:30 |
| 2 | **Prospecção** | 2021-09-28 08:00 → 2021-09-28 09:00 A | 2021-09-29 10:04 → 2021-10-07 12:00 A (+8d) | 1.26d → 7.38d | 0% → 100% | 41.37d → none | baseline start none → 2021-09-28 09:00; baseline finish none → 2021-10-07 12:00 |
| 3 | **PETEC** | 2021-09-28 08:00 → 2021-09-28 09:00 A | 2021-09-28 14:36 → 2021-10-04 09:00 A (+6d) | 0.7d → 4d | 0% → 100% | 41.37d → none | baseline start none → 2021-09-28 09:00; baseline finish none → 2021-10-04 09:00 |
| 4 | Estudar Dominio de Aplicação | 2021-09-28 08:00 → 2021-09-28 09:00 A | 2021-09-28 09:02 → 2021-09-28 18:00 A | 0.13d → 1d | 0% → 100% | 41.37d → none | resources none → José; baseline start none → 2021-09-28 09:00; baseline finish none → 2021-09-28 18:00 |
| 5 | Reunir-se com Fornecedor de Requisitos | 2021-09-28 09:02 → 2021-09-29 09:00 A (+1d) | 2021-09-28 10:04 → 2021-09-29 18:00 A (+1d) | 0.13d → 1d | 0% → 100% | 41.37d → none | resources none → José; baseline start none → 2021-09-29 09:00; baseline finish none → 2021-09-29 18:00 |
| 6 | Redigir PETEC | 2021-09-28 10:04 → 2021-09-30 09:00 A (+2d) | 2021-09-28 14:07 → 2021-09-30 16:00 A (+2d) | 0.38d → 0.75d | 0% → 100% | 41.37d → none | resources none → José; baseline start none → 2021-09-30 09:00; baseline finish none → 2021-09-30 18:00 |
| 7 | Revisar Proposta Técnica | 2021-09-28 14:07 → 2021-10-01 09:00 A (+3d) | 2021-09-28 14:36 → 2021-10-01 18:00 A (+3d) | 0.06d → 1d | 0% → 100% | 41.37d → none | resources none → Jubeto; baseline start none → 2021-10-01 09:00; baseline finish none → 2021-10-01 18:00 |
| 8 | Aprovar PTEC | 2021-09-28 14:36 → 2021-10-04 09:00 A (+6d) | 2021-09-28 14:36 → 2021-10-04 09:00 A (+6d) |  | 0% → 100% | 41.37d → none | resources none → Cliente; baseline start none → 2021-10-04 09:00; baseline finish none → 2021-10-04 09:00 |
| 9 | **Est. Prel. Tam.** | 2021-09-28 14:36 → 2021-10-05 09:00 A (+7d) | 2021-09-28 15:33 → 2021-10-06 18:00 A (+8d) | 0.12d → 2d | 0% → 100% | 41.37d → none | baseline start none → 2021-10-05 09:00; baseline finish none → 2021-10-06 18:00 |
| 10 | Estimar Tamanho do Projeto | 2021-09-28 14:36 → 2021-10-05 09:00 A (+7d) | 2021-09-28 15:04 → 2021-10-05 18:00 A (+7d) | 0.06d → 1d | 0% → 100% | 41.37d → none | resources none → Jubeto; João; baseline start none → 2021-10-05 09:00; baseline finish none → 2021-10-05 18:00 |
| 11 | Revisar Estimativa de Tamanho do Projeto | 2021-09-28 15:04 → 2021-10-06 09:00 A (+8d) | 2021-09-28 15:33 → 2021-10-06 18:00 A (+8d) | 0.06d → 1d | 0% → 100% | 41.37d → none | resources none → Grupo Externo; baseline start none → 2021-10-06 09:00; baseline finish none → 2021-10-06 18:00 |
| 12 | **Est. Prel. Cronograma e Orçamento** | 2021-09-28 15:33 → 2021-10-07 09:00 A (+9d) | 2021-09-29 10:04 → 2021-10-07 12:00 A (+8d) | 0.44d → 0.38d | 0% → 100% | 41.37d → none | baseline start none → 2021-10-07 09:00; baseline finish none → 2021-10-07 12:00 |
| 13 | Elaborar Cronograma e Orçamento Preliminares | 2021-09-28 15:33 → 2021-10-07 09:00 A (+9d) | 2021-09-29 08:33 → 2021-10-07 12:00 A (+8d) | 0.25d → 0.38d | 0% → 100% | 41.37d → none | resources none → João; baseline start none → 2021-10-07 09:00; baseline finish none → 2021-10-07 11:00 |
| 14 | Revisar Cronograma e Orçamento Preliminares | 2021-09-29 08:33 → 2021-10-07 11:00 A (+8d) | 2021-09-29 10:04 → 2021-10-07 11:30 A (+8d) | 0.19d → 0.06d | 0% → 100% | 41.37d → none | resources none → Jubeto; baseline start none → 2021-10-07 11:00; baseline finish none → 2021-10-07 12:00 |
| 15 | **Análise** | 2021-09-29 10:04 → 2021-10-07 13:00 A (+8d) | 2021-10-04 16:26 → 2021-10-18 11:00 A (+14d) | 3.67d → 6.88d | 0% → 100% | 0d → none | baseline start none → 2021-10-07 13:00; baseline finish none → 2021-10-18 12:00 |
| 16 | **Documento de Requisitos** | 2021-09-29 10:04 → 2021-10-07 13:00 A (+8d) | 2021-10-04 09:26 → 2021-10-15 10:00 A (+11d) | 2.92d → 5.75d | 0% → 100% | 0d → none | baseline start none → 2021-10-07 13:00; baseline finish none → 2021-10-15 10:00 |
| 17 | Reunir-se com Cliente | 2021-09-29 10:04 → 2021-10-07 13:00 A (+8d) | 2021-09-29 13:04 → 2021-10-07 16:00 A (+8d) | 0.25d → 0.38d | 0% → 100% |  | resources none → José; baseline start none → 2021-10-07 13:00; baseline finish none → 2021-10-07 18:00 |
| 18 | Elaborar DRE | 2021-09-29 13:04 → 2021-10-08 09:00 A (+9d) | 2021-10-01 11:02 → 2021-10-13 17:00 A (+12d) | 1.87d → 1.88d | 0% → 100% | 41.37d → none | resources none → José; baseline start none → 2021-10-08 09:00; baseline finish none → 2021-10-14 14:00 |
| 19 | Revisar DRE | 2021-10-01 11:02 → 2021-10-14 14:00 A (+13d) | 2021-10-04 09:26 → 2021-10-14 17:00 A (+10d) | 0.8d → 0.38d | 0% → 100% |  | resources none → João; baseline start none → 2021-10-14 14:00; baseline finish none → 2021-10-15 10:00 |
| 20 | Submeter DRE para Aprovação do Cliente | 2021-10-04 09:26 → 2021-10-15 10:00 A (+11d) | 2021-10-04 09:26 → 2021-10-15 10:00 A (+11d) |  | 0% → 100% |  | resources none → João; baseline start none → 2021-10-15 10:00; baseline finish none → 2021-10-15 10:00 |
| 21 | **MRB** | 2021-10-04 09:26 → 2021-10-15 10:00 A (+11d) | 2021-10-04 16:26 → 2021-10-18 11:00 A (+14d) | 0.75d → 1.12d | 0% → 100% | 0d → none | baseline start none → 2021-10-15 10:00; baseline finish none → 2021-10-18 12:00 |
| 22 | Elaborar MRB | 2021-10-04 09:26 → 2021-10-15 10:00 A (+11d) | 2021-10-04 14:55 → 2021-10-15 18:00 A (+11d) | 0.56d → 0.88d | 0% → 100% |  | resources none → João; baseline start none → 2021-10-15 10:00; baseline finish none → 2021-10-18 10:00 |
| 23 | Revisar MRB | 2021-10-04 14:55 → 2021-10-18 10:00 A (+14d) | 2021-10-04 16:26 → 2021-10-18 11:00 A (+14d) | 0.19d → 0.12d | 0% → 100% |  | resources none → José; baseline start none → 2021-10-18 10:00; baseline finish none → 2021-10-18 12:00 |
| 24 | **Projeto** | 2021-10-04 16:26 → 2021-10-18 13:00 A (+14d) | 2021-10-08 09:26 → 2021-10-19 15:00 A (+11d) | 3.25d → 1.25d | 0% → 100% | 0d → none | baseline start none → 2021-10-18 13:00; baseline finish none → 2021-10-19 15:00 |
| 25 | **Diagrama de Classes** | 2021-10-04 16:26 → 2021-10-18 13:00 A (+14d) | 2021-10-07 09:26 → 2021-10-19 11:00 A (+12d) | 2.25d → 0.88d | 0% → 100% | 0d → none | baseline start none → 2021-10-18 13:00; baseline finish none → 2021-10-19 10:00 |
| 26 | Elaborar Diagrama de Classe | 2021-10-04 16:26 → 2021-10-18 13:00 A (+14d) | 2021-10-05 14:26 → 2021-10-18 17:00 A (+13d) | 0.75d → 0.5d | 0% → 100% |  | resources none → Jubeto; baseline start none → 2021-10-18 13:00; baseline finish none → 2021-10-18 17:00 |
| 27 | Revisar Diagrama de Classe | 2021-10-05 14:26 → 2021-10-18 17:00 A (+13d) | 2021-10-06 14:26 → 2021-10-18 18:00 A (+12d) | 1d → 0.12d | 0% → 100% |  | resources none → Jubeto; baseline start none → 2021-10-18 17:00; baseline finish none → 2021-10-18 18:00 |
| 28 | Atualizar MRB | 2021-10-06 14:26 → 2021-10-19 09:00 A (+13d) | 2021-10-07 09:26 → 2021-10-19 11:00 A (+12d) | 0.5d → 0.25d | 0% → 100% |  | resources none → José; baseline start none → 2021-10-19 09:00; baseline finish none → 2021-10-19 10:00 |
| 29 | **Modelo Entidade Relacionamento** | 2021-10-07 09:26 → 2021-10-19 10:00 A (+12d) | 2021-10-08 09:26 → 2021-10-19 15:00 A (+11d) | 1d → 0.5d | 0% → 100% | 0d → none | baseline start none → 2021-10-19 10:00; baseline finish none → 2021-10-19 15:00 |
| 30 | Elaborar Mer | 2021-10-07 09:26 → 2021-10-19 10:00 A (+12d) | 2021-10-07 14:26 → 2021-10-19 14:00 A (+12d) | 0.5d → 0.38d | 0% → 100% |  | resources none → João; baseline start none → 2021-10-19 10:00; baseline finish none → 2021-10-19 14:00 |
| 31 | Revisar Mer | 2021-10-07 14:26 → 2021-10-19 14:00 A (+12d) | 2021-10-08 09:26 → 2021-10-19 15:00 A (+11d) | 0.5d → 0.12d | 0% → 100% |  | resources none → João; baseline start none → 2021-10-19 14:00; baseline finish none → 2021-10-19 15:00 |
| 32 | **Planejamento** | 2021-09-28 08:00 → 2021-10-19 15:00 A (+21d) | 2021-10-12 16:26 → 2021-10-20 18:00 A (+8d) | 10.93d? → 1.38d | 0% → 100% | 41.37d → none | baseline start none → 2021-10-19 15:00; baseline finish none → 2021-10-20 17:00 |
| 33 | Elaborar Estimativa de Tamanho Definitiva | 2021-10-08 09:26 → 2021-10-19 15:00 A (+11d) | 2021-10-11 16:26 → 2021-10-20 10:00 A (+9d) | 1.75d → 0.5d | 0% → 100% | 41.37d → none | resources none → Jubeto; baseline start none → 2021-10-19 15:00; baseline finish none → 2021-10-20 11:00 |
| 34 | Elaborar Cronograma Definitivo | 2021-10-11 16:26 → 2021-10-20 11:00 A (+9d) | 2021-10-12 16:26 → 2021-10-20 18:00 A (+8d) | 1d → 0.75d | 0% → 100% | 41.37d → none | resources none → Jubeto; baseline start none → 2021-10-20 11:00; baseline finish none → 2021-10-20 17:00 |
| 35 | Elaborar Orçamento Definitivo | 2021-09-28 08:00 → 2021-10-19 15:00 A (+21d) | 2021-09-28 17:00 → 2021-10-19 18:00 A (+21d) | 1d? → 0.38d | 0% → 100% | 51.3d → none | resources none → Jubeto; baseline start none → 2021-10-19 15:00; baseline finish none → 2021-10-20 12:00 |
| 36 | **Desenvolvimento** | 2021-09-28 08:00 → 2021-11-24 09:00 A (+57d) | 2021-12-09 10:24 → 2021-12-01 09:30 (-8d) | 52.3d → 5.06d | 0% → 36% |  | baseline start none → 2021-11-24 09:00; baseline finish none → 2021-12-01 09:30 |
| 39 | **Implementar RFC01 - Manter Administrador** | 2021-09-28 08:00 → 2021-11-24 09:00 A (+57d) | 2021-09-28 10:00 → 2021-11-24 14:30 A (+57d) | 0.25d → 0.56d | 0% → 100% | 52.05d → none | baseline start none → 2021-11-24 09:00; baseline finish none → 2021-11-24 09:00 |
| 40 | Implementar RF01 - Incluir administrador | 2021-09-28 08:00 → 2021-11-24 09:00 A (+57d) | 2021-09-28 10:00 → 2021-11-24 14:00 A (+57d) | 0.25d → 0.5d | 0% → 100% | 52.05d → none | resources none → João; baseline start none → 2021-11-24 09:00; baseline finish none → 2021-11-24 14:00 |
| 41 | Implementar RF02 - Editar administrador | 2021-09-28 08:00 → 2021-11-24 09:00 A (+57d) | 2021-09-28 10:00 → 2021-11-24 14:30 A (+57d) | 0.25d → 0.56d | 0% → 100% | 52.05d → none | resources none → João; baseline start none → 2021-11-24 09:00; baseline finish none → 2021-11-24 14:30 |
| 42 | Implementar RF03 - Consultar administrador | 2021-09-28 08:00 → 2021-11-24 09:00 A (+57d) | 2021-09-28 10:00 → 2021-11-24 14:00 A (+57d) | 0.25d → 0.5d | 0% → 100% | 52.05d → none | resources none → João; baseline start none → 2021-11-24 09:00; baseline finish none → 2021-11-24 14:00 |
| 43 | Implementar RF04 - Remover administrador | 2021-09-28 08:00 → 2021-11-24 09:00 A (+57d) | 2021-09-28 10:00 → 2021-11-24 14:00 A (+57d) | 0.25d → 0.5d | 0% → 100% | 52.05d → none | resources none → João; baseline start none → 2021-11-24 09:00; baseline finish none → 2021-11-24 14:00 |
| 44 | **Implementar RFC02 - Manter Usuário** | 2021-09-28 08:00 → 2021-11-24 09:00 A (+57d) | 2021-09-28 10:00 → 2021-11-24 14:30 A (+57d) | 0.25d → 0.56d | 0% → 100% | 52.05d → none | baseline start none → 2021-11-24 09:00; baseline finish none → 2021-11-24 09:00 |
| 45 | Implementar RF05 - Incluir usuário | 2021-09-28 08:00 → 2021-11-24 09:00 A (+57d) | 2021-09-28 10:00 → 2021-11-24 14:00 A (+57d) | 0.25d → 0.5d | 0% → 100% | 52.05d → none | resources none → José; baseline start none → 2021-11-24 09:00; baseline finish none → 2021-11-24 14:00 |
| 46 | Implementar RF06 - Editar usuário | 2021-09-28 08:00 → 2021-11-24 09:00 A (+57d) | 2021-09-28 10:00 → 2021-11-24 14:30 A (+57d) | 0.25d → 0.56d | 0% → 100% | 52.05d → none | resources none → José; baseline start none → 2021-11-24 09:00; baseline finish none → 2021-11-24 14:30 |
| 47 | Implementar RF07 - Consultar usuário | 2021-09-28 08:00 → 2021-11-24 09:00 A (+57d) | 2021-09-28 10:00 → 2021-11-24 14:00 A (+57d) | 0.25d → 0.5d | 0% → 100% | 52.05d → none | resources none → José; baseline start none → 2021-11-24 09:00; baseline finish none → 2021-11-24 14:00 |
| 48 | Implementar RF08 - Remover usuário | 2021-09-28 08:00 → 2021-11-24 09:00 A (+57d) | 2021-09-28 10:00 → 2021-11-24 14:00 A (+57d) | 0.25d → 0.5d | 0% → 100% | 52.05d → none | resources none → José; baseline start none → 2021-11-24 09:00; baseline finish none → 2021-11-24 14:00 |
| 54 | **Implementar RFC03 - Manter Produtos** | 2021-09-28 08:00 → 2021-11-24 09:00 (+57d) | 2021-09-28 10:00 → 2021-11-24 09:00 (+57d) | 0.25d → 0d |  | 52.05d → 4.06d | baseline start none → 2021-11-24 09:00; baseline finish none → 2021-11-24 09:00 |
| 55 | Implementar RF09 - Incluir produto | 2021-09-28 08:00 → 2021-11-24 09:00 (+57d) | 2021-09-28 10:00 → 2021-11-24 14:00 (+57d) | 0.25d → 0.5d |  | 52.05d → none | resources none → Jubeto; baseline start none → 2021-11-24 09:00; baseline finish none → 2021-11-24 14:00 |
| 56 | Implementar RF10 - Editar produto | 2021-09-28 08:00 → 2021-11-24 09:00 (+57d) | 2021-09-28 10:00 → 2021-11-24 14:30 (+57d) | 0.25d → 0.56d |  | 52.05d → none | resources none → Jubeto; baseline start none → 2021-11-24 09:00; baseline finish none → 2021-11-24 14:30 |
| 57 | Implementar RF11 - Procurar produto | 2021-09-28 08:00 → 2021-11-24 09:00 (+57d) | 2021-09-28 10:00 → 2021-11-24 14:00 (+57d) | 0.25d → 0.5d |  | 52.05d → none | resources none → Jubeto; baseline start none → 2021-11-24 09:00; baseline finish none → 2021-11-24 14:00 |
| 58 | Implementar RF12 - Remover produto | 2021-09-28 08:00 → 2021-11-24 09:00 (+57d) | 2021-09-28 10:00 → 2021-11-24 14:00 (+57d) | 0.25d → 0.5d |  | 52.05d → none | resources none → Jubeto; baseline start none → 2021-11-24 09:00; baseline finish none → 2021-11-24 14:00 |
| 59 | **Implementar RFC04 - Manter Transportadora** | 2021-09-28 08:00 → 2021-11-24 09:00 (+57d) | 2021-09-28 10:00 → 2021-11-24 09:00 (+57d) | 0.25d → 0d |  | 52.05d → 4.06d | baseline start none → 2021-11-24 09:00; baseline finish none → 2021-11-24 09:00 |
| 60 | Implementar RF13 - Incluir transportadora | 2021-09-28 08:00 → 2021-11-24 09:00 (+57d) | 2021-09-28 10:00 → 2021-11-24 14:00 (+57d) | 0.25d → 0.5d |  | 52.05d → none | resources none → João; baseline start none → 2021-11-24 09:00; baseline finish none → 2021-11-24 14:00 |
| 61 | Implementar RF14 - Editar transportadora | 2021-09-28 08:00 → 2021-11-24 09:00 (+57d) | 2021-09-28 10:00 → 2021-11-24 14:30 (+57d) | 0.25d → 0.56d |  | 52.05d → none | resources none → João; baseline start none → 2021-11-24 09:00; baseline finish none → 2021-11-24 14:30 |
| 62 | Implementar RF15 - Consultar transportadora | 2021-09-28 08:00 → 2021-11-24 09:00 (+57d) | 2021-09-28 10:00 → 2021-11-24 14:00 (+57d) | 0.25d → 0.5d |  | 52.05d → none | resources none → João; baseline start none → 2021-11-24 09:00; baseline finish none → 2021-11-24 14:00 |
| 63 | Implementar RF16 - Remover transportadora | 2021-09-28 08:00 → 2021-11-24 09:00 (+57d) | 2021-09-28 10:00 → 2021-11-24 14:00 (+57d) | 0.25d → 0.5d |  | 52.05d → none | resources none → João; baseline start none → 2021-11-24 09:00; baseline finish none → 2021-11-24 14:00 |
| 64 | **Implementar RFC05 - Realizar Compras** | 2021-09-28 08:00 → 2021-11-24 09:00 (+57d) | 2021-09-28 10:00 → 2021-11-24 09:00 (+57d) | 0.25d → 0d |  | 52.05d → 3d | baseline start none → 2021-11-24 09:00; baseline finish none → 2021-11-24 09:00 |
| 65 | Implementar RF17 - Fazer compra | 2021-09-28 08:00 → 2021-11-24 09:00 (+57d) | 2021-09-28 10:00 → 2021-11-24 14:00 (+57d) | 0.25d → 0.5d |  | 52.05d → none | resources none → José; baseline start none → 2021-11-24 09:00; baseline finish none → 2021-11-24 14:00 |
| 66 | Implementar RF18 - Editar compra | 2021-09-28 08:00 → 2021-11-24 09:00 (+57d) | 2021-09-28 10:00 → 2021-11-24 14:30 (+57d) | 0.25d → 0.56d |  | 52.05d → none | resources none → José; baseline start none → 2021-11-24 09:00; baseline finish none → 2021-11-24 14:30 |
| 67 | Implementar RF19 - Consultar compra | 2021-09-28 08:00 → 2021-11-24 09:00 (+57d) | 2021-09-28 10:00 → 2021-11-24 14:00 (+57d) | 0.25d → 0.5d |  | 52.05d → none | resources none → José; baseline start none → 2021-11-24 09:00; baseline finish none → 2021-11-24 14:00 |
| 68 | Implementar RF20 - Remover compra | 2021-09-28 08:00 → 2021-11-24 09:00 (+57d) | 2021-09-28 10:00 → 2021-11-24 14:00 (+57d) | 0.25d → 0.5d |  | 52.05d → none | resources none → José; baseline start none → 2021-11-24 09:00; baseline finish none → 2021-11-24 14:00 |
| 69 | Implementar RFC06 - Manter Avaliações | 2021-09-28 08:00 → 2021-11-24 09:00 (+57d) | 2021-09-28 10:24 → 2021-11-24 18:00 (+57d) | 0.3d → 1d |  | 52d → 3.06d | baseline start none → 2021-11-24 09:00; baseline finish none → 2021-11-24 18:00 |
| 70 | **Implementar RFC07 - Emitir Relatórios** | 2021-12-08 08:00 → 2021-11-24 09:00 (-14d) | 2021-12-09 10:24 → 2021-11-24 09:00 (-15d) | 1.3d → 0d |  | 0d → 4.06d | baseline start none → 2021-11-24 09:00; baseline finish none → 2021-11-24 09:00 |
| 71 | Implementar RF21 - Emitir relatório de categorias mais vendidas | 2021-12-08 08:00 → 2021-11-24 09:00 (-14d) | 2021-12-08 10:24 → 2021-11-24 17:00 (-14d) | 0.3d → 0.88d |  |  | resources none → Jubeto; baseline start none → 2021-11-24 09:00; baseline finish none → 2021-11-24 17:00 |
| 72 | Implementar RF22 - Emitir relatório de produtos mais bem avaliados | 2021-12-09 08:00 → 2021-11-24 09:00 (-15d) | 2021-12-09 10:24 → 2021-11-24 17:00 (-15d) | 0.3d → 0.88d |  |  | resources none → Jubeto; baseline start none → 2021-11-24 09:00; baseline finish none → 2021-11-24 17:00 |
| 73 | Implementar RF23 - Emitir relatório de categorias mais populares | 2021-12-09 08:00 → 2021-11-24 09:00 (-15d) | 2021-12-09 10:24 → 2021-11-24 18:00 (-15d) | 0.3d → 1d |  |  | resources none → Jubeto; baseline start none → 2021-11-24 09:00; baseline finish none → 2021-11-24 18:00 |
| 74 | Implementar RNF01 - Criptografar a senha armazenada no banco de dados | 2021-09-28 08:00 → 2021-11-24 09:00 (+57d) | 2021-09-28 10:24 → 2021-11-24 15:00 (+57d) | 0.3d → 0.62d |  | 52d → 2.25d | resources none → Jubeto; baseline start none → 2021-11-24 09:00; baseline finish none → 2021-11-24 15:00 |
| 75 | Implementar RNF02 - Limitar o número de tentativas de login malsucedidas em 5 | 2021-09-28 08:00 → 2021-11-25 15:00 (+58d) | 2021-09-28 10:24 → 2021-11-26 11:00 (+59d) | 0.3d → 0.62d |  | 52d → 1.81d | resources none → Jubeto; baseline start none → 2021-11-25 15:00; baseline finish none → 2021-11-26 11:00 |
| 76 | Implementar RNF03 - Toda operação deve ser retornada em até 10 segundos | 2021-09-28 08:00 → 2021-11-25 09:00 (+58d) | 2021-09-28 10:24 → 2021-11-25 14:30 (+58d) | 0.3d → 0.56d |  | 52d → 0d | resources none → Jubeto; baseline start none → 2021-11-25 09:00; baseline finish none → 2021-11-25 14:30 |
| 86 | **Monitoramento e Controle** | 2021-09-28 08:00 → 2021-11-24 09:00 (+57d) | 2021-09-28 15:00 → 2021-11-24 15:30 (+57d) | 0.75d → 0.69d |  | 51.55d → 4.38d | baseline start none → 2021-11-24 09:00; baseline finish none → 2021-11-24 15:30 |

| ID | Task | Start | Finish | Duration | Total float | Other |
| --- | --- | --- | --- | --- | --- | --- |
| 87 | Acompanhar Projeto | 2021-09-28 08:00 → 2021-11-24 09:00 (+57d) | 2021-09-28 15:00 → 2021-11-24 15:30 (+57d) | 0.75d → 0.69d | 51.55d → 4.38d | resources none → João; baseline start none → 2021-11-24 09:00; baseline finish none → 2021-11-24 15:30 |
| 88 | **Gerrencia de Configuração** | 2021-09-28 08:00 → 2021-11-24 09:00 (+57d) | 2021-09-28 08:00 → 2021-11-24 09:00 (+57d) |  | 52.3d → 5.06d | baseline start none → 2021-11-24 09:00; baseline finish none → 2021-11-24 09:00 |
| 89 | Elaborar Branch | 2021-09-28 08:00 → 2021-11-24 09:00 (+57d) | 2021-09-28 08:00 → 2021-11-24 09:00 (+57d) |  | 52.3d → 5.06d | resources none → João; baseline start none → 2021-11-24 09:00; baseline finish none → 2021-11-24 09:00 |
| 90 | Elaborar Merge da Branch X para a Trunk | 2021-09-28 08:00 → 2021-11-24 09:00 (+57d) | 2021-09-28 08:00 → 2021-11-24 09:00 (+57d) |  | 52.3d → 5.06d | resources none → João; baseline start none → 2021-11-24 09:00; baseline finish none → 2021-11-24 09:00 |
| 91 | **Fechamento** | 2021-09-28 08:00 → 2021-11-25 15:30 (+58d) | 2021-09-28 17:00 → 2021-11-30 14:00 (+63d) | 1d? → 2.81d | 51.3d → 0.56d | baseline start none → 2021-11-25 15:30; baseline finish none → 2021-11-30 14:00 |
| 92 | Elaborar Relatório de Lições Aprendidas | 2021-09-28 08:00 → 2021-11-29 13:36 (+62d) | 2021-09-28 17:00 → 2021-11-30 14:00 (+63d) | 1d? → 1.05d | 51.3d → 0.56d | resources none → José; baseline start none → 2021-11-29 13:36; baseline finish none → 2021-11-30 14:00 |
| 93 | Atualizar Base de Dados Histórica | 2021-09-28 08:00 → 2021-11-25 15:30 (+58d) | 2021-09-28 17:00 → 2021-11-29 13:36 (+62d) | 1d? → 1d | 51.3d → 1.61d | resources none → José; baseline start none → 2021-11-25 15:30; baseline finish none → 2021-11-29 13:36 |
| 94 | Controle de Mudança | 2021-09-28 08:00 → 2021-11-25 15:30 (+58d) | 2021-09-30 09:02 → 2021-11-26 16:06 (+57d) | 2.13d → 1.07d | 50.17d → 2.3d | resources none → José; baseline start none → 2021-11-25 15:30; baseline finish none → 2021-11-26 16:06 |

## Version 3 (saved 2021-12-02)

Note of the change: Atualização cronograma

Last finish stays 2021-12-01.

Changed:

| ID | Task | Start | Finish | Duration | Complete | Total float |
| --- | --- | --- | --- | --- | --- | --- |
| 36 | **Desenvolvimento** |  |  |  | 36% → 34% |  |
| 38 | **Implementação** |  | 2021-11-24 14:30 A → 2021-11-24 14:00 A | 0.56d → 0.5d |  |  |
| 39 | **Implementar RFC01 - Manter Administrador** |  | 2021-11-24 14:30 A → 2021-11-24 14:00 A | 0.56d → 0.5d |  |  |
| 41 | Implementar RF02 - Editar administrador |  | 2021-11-24 14:30 A → 2021-11-24 14:00 A | 0.56d → 0.5d |  |  |
| 42 | Implementar RF03 - Consultar administrador |  | 2021-11-24 14:00 A → 2021-11-24 12:00 A | 0.5d → 0.38d |  |  |
| 43 | Implementar RF04 - Remover administrador |  | 2021-11-24 14:00 A → 2021-11-24 12:00 A | 0.5d → 0.38d |  |  |
| 44 | **Implementar RFC02 - Manter Usuário** |  | 2021-11-24 14:30 A → 2021-11-24 14:00 A | 0.56d → 0.5d |  |  |
| 46 | Implementar RF06 - Editar usuário |  | 2021-11-24 14:30 A → 2021-11-24 14:00 A | 0.56d → 0.5d |  |  |
| 47 | Implementar RF07 - Consultar usuário |  | 2021-11-24 14:00 A → 2021-11-24 12:00 A | 0.5d → 0.38d |  |  |
| 48 | Implementar RF08 - Remover usuário |  | 2021-11-24 14:00 A → 2021-11-24 12:00 A | 0.5d → 0.38d |  |  |
| 86 | **Monitoramento e Controle** | 2021-11-24 09:00 → 2021-11-25 09:00 (+1d) | 2021-11-24 15:30 → 2021-11-25 15:30 (+1d) |  |  | 4.38d → 3.38d |
| 87 | Acompanhar Projeto | 2021-11-24 09:00 → 2021-11-25 09:00 (+1d) | 2021-11-24 15:30 → 2021-11-25 15:30 (+1d) |  |  | 4.38d → 3.38d |

## Version 4 (saved 2021-12-09)

Note of the change: Atualização no cronograma

Last finish stays 2021-12-01. Complete tasks 33 → 49.

Changed:

| ID | Task | Start | Finish | Duration | Complete | Total float |
| --- | --- | --- | --- | --- | --- | --- |
| 1 | **Projeto E-commerce** |  |  |  | 56% → 76% |  |
| 36 | **Desenvolvimento** |  |  |  | 34% → 57% |  |
| 52 | **Release 02** | 2021-11-24 09:00 A |  |  | 0% → 41% |  |
| 53 | **Implementação** | 2021-11-24 09:00 A | 2021-11-26 11:00 → 2021-11-26 16:30 | 2.25d → 2.81d | 0% → 59% | 1d → 1.25d |
| 54 | **Implementar RFC03 - Manter Produtos** | 2021-11-24 09:00 A | 2021-11-24 09:00 → 2021-11-24 15:00 A | 0d → 0.62d | 0% → 100% | 4.06d → none |
| 55 | Implementar RF09 - Incluir produto | 2021-11-24 09:00 A | 2021-11-24 14:00 → 2021-11-24 15:00 A | 0.5d → 0.62d | 0% → 100% |  |
| 56 | Implementar RF10 - Editar produto | 2021-11-24 09:00 A | 2021-11-24 14:30 → 2021-11-24 15:00 A | 0.56d → 0.62d | 0% → 100% |  |
| 57 | Implementar RF11 - Procurar produto | 2021-11-24 09:00 A | 2021-11-24 14:00 → 2021-11-24 12:00 A | 0.5d → 0.38d | 0% → 100% |  |
| 58 | Implementar RF12 - Remover produto | 2021-11-24 09:00 A | 2021-11-24 14:00 → 2021-11-24 11:00 A | 0.5d → 0.25d | 0% → 100% |  |
| 59 | **Implementar RFC04 - Manter Transportadora** | 2021-11-24 09:00 A | 2021-11-24 09:00 → 2021-11-24 15:00 A | 0d → 0.62d | 0% → 100% | 4.06d → none |
| 60 | Implementar RF13 - Incluir transportadora | 2021-11-24 09:00 A | 2021-11-24 14:00 → 2021-11-24 15:00 A | 0.5d → 0.62d | 0% → 100% |  |
| 61 | Implementar RF14 - Editar transportadora | 2021-11-24 09:00 A | 2021-11-24 14:30 → 2021-11-24 15:00 A | 0.56d → 0.62d | 0% → 100% |  |
| 62 | Implementar RF15 - Consultar transportadora | 2021-11-24 09:00 A | 2021-11-24 14:00 → 2021-11-24 15:00 A | 0.5d → 0.62d | 0% → 100% |  |
| 63 | Implementar RF16 - Remover transportadora | 2021-11-24 09:00 A | 2021-11-24 14:00 → 2021-11-24 11:00 A | 0.5d → 0.25d | 0% → 100% |  |
| 74 | Implementar RNF01 - Criptografar a senha armazenada no banco de dados | 2021-11-24 09:00 → 2021-11-26 10:30 (+2d) | 2021-11-24 15:00 → 2021-11-26 16:30 (+2d) |  |  | 2.25d → 0.12d |
| 77 | **Teste** | 2021-11-24 09:00 → 2021-11-25 09:00 A (+1d) |  | 5.06d → 4.06d | 0% → 25% |  |
| 78 | Testar RFC03 | 2021-11-24 09:00 → 2021-11-25 09:00 A (+1d) | 2021-11-24 18:00 → 2021-11-25 18:00 A (+1d) |  | 0% → 100% |  |
| 79 | Testar RFC04 | 2021-11-24 09:00 → 2021-11-25 09:00 A (+1d) | 2021-11-24 18:00 → 2021-11-25 18:00 A (+1d) |  | 0% → 100% |  |
| 80 | Testar RFC05 | 2021-11-24 15:00 → 2021-11-25 14:30 (+1d) | 2021-11-26 10:30 → 2021-11-26 14:30 |  |  |  |
| 82 | Testar RFC07 | 2021-11-24 09:00 → 2021-11-25 09:00 (+1d) | 2021-11-24 18:00 → 2021-11-25 18:00 (+1d) |  |  |  |
| 83 | Testar RNF01 | 2021-11-24 15:00 → 2021-11-26 16:30 (+2d) | 2021-11-26 16:30 → 2021-11-30 17:30 (+4d) |  |  |  |
| 86 | **Monitoramento e Controle** | 2021-11-25 09:00 A | 2021-11-25 15:30 A |  | 0% → 100% | 3.38d → none |
| 87 | Acompanhar Projeto | 2021-11-25 09:00 A | 2021-11-25 15:30 A |  | 0% → 100% | 3.38d → none |
| 88 | **Gerrencia de Configuração** | 2021-11-24 09:00 A | 2021-11-24 09:00 A |  | 0% → 100% | 5.06d → none |
| 89 | Elaborar Branch | 2021-11-24 09:00 A | 2021-11-24 09:00 A |  | 0% → 100% | 5.06d → none |
| 90 | Elaborar Merge da Branch X para a Trunk | 2021-11-24 09:00 A | 2021-11-24 09:00 A |  | 0% → 100% | 5.06d → none |
| 91 | **Fechamento** | 2021-11-25 15:30 A | 2021-11-30 14:00 A |  | 0% → 100% | 0.56d → none |
| 92 | Elaborar Relatório de Lições Aprendidas | 2021-11-29 13:36 A | 2021-11-30 14:00 A |  | 0% → 100% | 0.56d → none |
| 93 | Atualizar Base de Dados Histórica | 2021-11-25 15:30 A | 2021-11-29 13:36 A |  | 0% → 100% | 1.61d → none |
| 94 | Controle de Mudança | 2021-11-25 15:30 A | 2021-11-26 16:06 A |  | 0% → 100% | 2.3d → none |
